# gpp20112

Schedule from MS Project, 2011-08-22 to 2011-12-19, costs in R$, A marks actual dates.
Hunter Repacker

## Calendars

- Standard: Mon-Fri 08:00-12:00, 13:00-17:00; Sat-Sun off.

## Resources

| Resource | Group | Rate | Cost per use |
| --- | --- | --- | --- |
| Guilherme Fay | Funcionário | 50 |  |
| Jose Guimarães | Funcionário | 90 |  |
| Rafael Queiroz | Funcionário | 60 |  |
| GuilhermeCalixto | Funcionário | 40 |  |
| Renan Figueiras | Funcionário | 60 |  |
| Filipe Barbosa | Funcionário | 100 | 10 |
| Vinicius Vieira | Funcionário | 75 |  |
| Henrique Pereira | Funcionário | 60 |  |
| Resma de papel |  | 12 |  |
| -CAPITAL |  |  |  |
| Compra de computador |  | 1500 |  |
| Eletricidade |  |  |  |
| Equipamento de rede |  | 200 |  |
| Internet/Telefonia |  |  |  |
| Servidor |  | 8000 |  |
| Licenças Office |  | 224.91 |  |
| Licença MS Project |  | 1848.15 |  |
| Manutenção |  |  |  |
| -CUSTEIO |  |  |  |
| Professor Hilmer | Cliente |  |  |

## Schedule

| ID | WBS | Task | Duration | Start | Finish | Predecessors | Complete | Remaining | Constraint | Resources | Work | Actual work | Cost | Actual cost |
| --- | --- | --- | --- | --- | --- | --- | --- | --- | --- | --- | --- | --- | --- | --- |
| 1 | 1 | **Projeto de GPP** | 86d | 2011-08-22 A | 2011-12-19 |  | 49% | 43.78d |  | Compra de computador [800%]; Equipamento de rede; Resma de papel [200%]; Servidor; Licença MS Project [800%]; Licenças Office [800%] | 1510.84h | 260.84h | 135,073.53 | 18,668.05 |
| 2 | 1.1 | **Inciação** | 27.5d | 2011-08-22 A | 2011-09-28 A |  | 100% |  |  |  | 180.42h | 180.42h | 12,325 | 12,325 |
| 3 | 1.1.1 | **I1** | 13d | 2011-08-22 A | 2011-09-07 A |  | 100% |  |  |  | 138.75h | 138.75h | 9,465 | 9,465 |
| 4 | 1.1.1.1 | Estudo Inicial | 4d | 2011-08-22 A | 2011-08-25 A |  | 100% |  |  |  |  |  |  |  |
| 5 | 1.1.1.2 | Primeira reunião | 1d | 2011-08-26 A | 2011-08-26 A | 4 | 100% |  |  | Filipe Barbosa; Guilherme Fay; Renan Figueiras; Jose Guimarães | 8h | 8h | 610 | 610 |
| 6 | 1.1.1.4 | Definição do problema | 1d | 2011-08-26 A | 2011-08-26 A | 4 | 100% |  |  | Filipe Barbosa; GuilhermeCalixto; Jose Guimarães; Rafael Queiroz; Renan Figueiras; Vinicius Vieira | 42h | 42h | 3,170 | 3,170 |
| 7 | 1.1.1.3 | Estudo Inicial de requisitos | 2d | 2011-08-29 A | 2011-08-30 A | 5 | 100% |  |  | Rafael Queiroz; Vinicius Vieira | 2h | 2h | 135 | 135 |
| 8 | 1.1.1.7 | Elaborar EAP | 2d | 2011-08-29 A | 2011-08-30 A | 5 | 100% |  |  | Guilherme Fay; Renan Figueiras; Jose Guimarães | 8h | 8h | 500 | 500 |
| 9 | 1.1.1.8 | Elaborar Cronograma inicial | 2d | 2011-08-31 A | 2011-09-01 A | 8 | 100% |  |  | Jose Guimarães; Guilherme Fay; Renan Figueiras | 8h | 8h | 580 | 580 |
| 10 | 1.1.1.6 | Elaborar termo de abertura básico | 6d | 2011-08-31 A | 2011-09-07 A | 7 | 100% |  |  | Filipe Barbosa; GuilhermeCalixto; Guilherme Fay; Renan Figueiras; Jose Guimarães; Rafael Queiroz; Vinicius Vieira | 63.75h | 63.75h | 4,000 | 4,000 |
| 11 | 1.1.1.5 | Definir gerência de configuração | 2d | 2011-08-29 A | 2011-08-30 A | 5 | 100% |  |  | Guilherme Fay; Jose Guimarães | 7h | 7h | 470 | 470 |
| 12 | 1.1.2 | **I2** | 13.5d | 2011-09-09 A | 2011-09-28 A | 3 | 100% |  |  |  | 41.67h | 41.67h | 2,860 | 2,860 |
| 13 | 1.1.2.1 | Segunda reunião | 1d | 2011-09-09 A | 2011-09-09 A |  | 100% |  |  | Filipe Barbosa; Jose Guimarães | 2h | 2h | 200 | 200 |
| 14 | 1.1.2.2 | Levantamento riscos | 3d | 2011-09-09 A | 2011-09-14 A | 13 | 100% |  |  | Henrique Pereira; Vinicius Vieira; Rafael Queiroz | 9h | 9h | 585 | 585 |
| 15 | 1.1.2.10 | Definir requisitos (Funcionais) | 3d | 2011-09-14 A | 2011-09-19 A | 14 | 100% |  |  | Rafael Queiroz; Vinicius Vieira | 6h | 6h | 405 | 405 |
| 16 | 1.1.2.3 | Definir requisitos (Nao Funcionais) | 1d | 2011-09-14 A | 2011-09-16 A | 14 | 100% |  |  | Henrique Pereira | 3.67h | 3.67h | 220 | 220 |
| 17 | 1.1.2.6 | Definir arquitetura inicial | 1d | 2011-09-19 A | 2011-09-21 A | 15 | 100% |  |  | Rafael Queiroz; Henrique Pereira | 8h | 8h | 480 | 480 |
| 18 | 1.1.2.7 | Levantar orçamento inicial | 4d | 2011-09-19 A | 2011-09-28 A | 15 | 100% |  |  | Guilherme Fay; Jose Guimarães; Filipe Barbosa | 7h | 7h | 590 | 590 |
| 19 | 1.1.2.8 | Definir artefatos | 2d | 2011-09-19 A | 2011-09-27 A | 15 | 100% |  |  | Renan Figueiras | 4h | 4h | 240 | 240 |
| 20 | 1.1.2.9 | Levantar ferramentas | 3d | 2011-09-19 A | 2011-09-22 A | 15 | 100% |  |  | Guilherme Fay; Jose Guimarães | 2h | 2h | 140 | 140 |
| 21 | 1.7 | **Elaboração** | 14d | 2011-09-29 A | 2011-10-18 |  | 64% | 5.04d |  |  | 158.42h | 80.42h | 10,483.05 | 6,343.05 |
| 22 | 1.7.7 | **E1** | 7d | 2011-09-29 A | 2011-10-08 A |  | 100% |  |  |  | 27.42h | 27.42h | 2,306.05 | 2,306.05 |
| 23 | 1.7.7.16 | Terceira reunião | 1d | 2011-09-29 A | 2011-09-30 A |  | 100% |  |  | Filipe Barbosa; Jose Guimarães; Guilherme Fay; Renan Figueiras; Vinicius Vieira; Henrique Pereira | 15h | 15h | 1,190 | 1,190 |
| 24 | 1.7.7.17 | Refinar requisitos | 3d | 2011-09-30 A | 2011-10-04 A | 23 | 100% |  |  | Vinicius Vieira; Jose Guimarães; Filipe Barbosa | 10h | 10h | 960 | 960 |
| 25 | 1.7.7.18 | Elaborar diagrama de casos de uso inicial | 2d | 2011-10-04 A | 2011-10-05 A | 24 | 100% |  |  | Vinicius Vieira | 1h | 1h | 75 | 75 |
| 26 | 1.7.7.20 | Elaborar documento de visão | 1d | 2011-10-04 A | 2011-10-08 A | 24 | 100% |  | finish no earlier than 2011-10-08 | Guilherme Fay; Jose Guimarães | 0.42h | 0.42h | 21.05 | 21.05 |
| 27 | 1.7.7.19 | Elaborar documento de arquitetura | 6d | 2011-09-30 A | 2011-10-07 A | 23 | 100% |  |  | Rafael Queiroz | 1h | 1h | 60 | 60 |

| ID | WBS | Task | Type | Duration | Start | Finish | Predecessors | Complete | Remaining | Total slack | Resources | Work | Actual work | Cost | Actual cost |
| --- | --- | --- | --- | --- | --- | --- | --- | --- | --- | --- | --- | --- | --- | --- | --- |
| 28 | 1.7.8 | **E2** |  | 7d | 2011-10-10 A | 2011-10-18 | 22 | 25% | 5.25d | 0d |  | 131h | 53h | 8,177 | 4,037 |
| 29 | 1.7.8.22 | Quarta reunião |  | 1d | 2011-10-10 A | 2011-10-10 A |  | 100% |  |  | Filipe Barbosa; Vinicius Vieira; GuilhermeCalixto; Jose Guimarães; Guilherme Fay; Resma de papel | 18h | 18h | 1,397 | 1,397 |
| 30 | 1.7.8.23 | Refinamento de requisitos |  | 1d | 2011-10-11 A | 2011-10-11 A | 29 | 100% |  |  | Filipe Barbosa; Jose Guimarães; Vinicius Vieira | 19h | 19h | 1,680 | 1,680 |
| 31 | 1.7.8.24 | Entrega do termo de abertura básico | milestone | 0d | 2011-10-11 A | 2011-10-11 A | 30 | 100% |  |  | Guilherme Fay |  |  |  |  |
| 32 | 1.7.8.25 | Implementar componentes (Modulo EAP) |  | 4d | 2011-10-11 | 2011-10-17 | 30 |  |  | 1d | Filipe Barbosa; Rafael Queiroz | 32h |  | 1,930 |  |
| 33 | 1.7.8.26 | Teste |  | 4d | 2011-10-12 | 2011-10-17 | 30 |  |  | 0d | GuilhermeCalixto; Vinicius Vieira | 38h |  | 1,730 |  |
| 34 | 1.7.8.27 | Entrega do build 1 - definir modulo EAP |  | 1d | 2011-10-17 | 2011-10-18 | 33 |  |  | 0d | GuilhermeCalixto; Henrique Pereira; Jose Guimarães; Renan Figueiras; Vinicius Vieira | 8h |  | 480 |  |
| 35 | 1.7.8.28 | Gerar relatorio de retrospectiva |  | 1d | 2011-10-11 A | 2011-10-11 A | 29 | 100% |  |  | Henrique Pereira; Renan Figueiras | 16h | 16h | 960 | 960 |
| 36 | 1.3 | **Construção** |  | 24d | 2011-10-19 | 2011-11-21 |  |  |  |  |  | 572h |  | 35,625 |  |
| 37 | 1.3.3 | **C1** |  | 7d | 2011-10-19 | 2011-10-27 |  |  |  | 0d |  | 116h |  | 7,275 |  |
| 38 | 1.3.3.7 | Quinta reunião |  | 1d | 2011-10-19 | 2011-10-19 |  |  |  | 0d | Filipe Barbosa; Guilherme Fay; GuilhermeCalixto; Henrique Pereira; Jose Guimarães; Rafael Queiroz; Renan Figueiras; Vinicius Vieira | 44h |  | 2,985 |  |
| 39 | 1.3.3.8 | Implementar componentes da iteração |  | 3d | 2011-10-20 | 2011-10-24 | 38 |  |  | 0d | Filipe Barbosa; Rafael Queiroz | 36h |  | 2,650 |  |
| 40 | 1.3.3.13 | Teste |  | 1d | 2011-10-25 | 2011-10-25 | 39 |  |  | 0d | GuilhermeCalixto; Vinicius Vieira | 16h |  | 920 |  |
| 41 | 1.3.3.9 | Feedback do cliente |  | 1d | 2011-10-26 | 2011-10-26 | 40 |  |  | 0d | Professor Hilmer | 8h |  |  |  |
| 42 | 1.3.3.12 | Entrega do build 2 - integrar modulo EAP com o modulo do projeto |  | 1d | 2011-10-26 | 2011-10-27 | 41 |  |  | 0d | Henrique Pereira; Jose Guimarães; Renan Figueiras | 12h |  | 720 |  |
| 43 | 1.3.6 | **C2** |  | 8d | 2011-10-28 | 2011-11-08 | 37 |  |  | 0d |  | 296h |  | 18,780 |  |
| 44 | 1.3.6.14 | Refinamento de requisitos |  | 3d | 2011-10-28 | 2011-11-01 |  |  |  | 0d | Jose Guimarães; Guilherme Fay; Renan Figueiras | 72h |  | 4,800 |  |
| 45 | 1.3.6.15 | Integrar sub-sistemas |  | 2d | 2011-11-02 | 2011-11-03 | 44 |  |  | 0d | Filipe Barbosa; Rafael Queiroz | 32h |  | 2,570 |  |
| 46 | 1.3.6.16 | Testar e avaliar |  | 3d | 2011-11-04 | 2011-11-08 | 45 |  |  | 0d | GuilhermeCalixto; Henrique Pereira; Professor Hilmer | 72h |  | 2,400 |  |
| 47 | 1.3.6.17 | Entrega do build 3 - definir e implemetar a interface da WBS |  | 3d | 2011-11-04 | 2011-11-08 | 46SS |  |  | 0d | Renan Figueiras; Filipe Barbosa; Guilherme Fay; Jose Guimarães; Vinicius Vieira | 120h |  | 9,010 |  |
| 48 | 1.3.3 | **C3** |  | 9d | 2011-11-09 | 2011-11-21 | 43 |  |  | 0d |  | 160h |  | 9,570 |  |
| 49 | 1.3.3.1 | Feedbak do cliente |  | 2d | 2011-11-09 | 2011-11-10 |  |  |  | 0d | Professor Hilmer | 16h |  |  |  |
| 50 | 1.3.3.2 | Implmentar requisitos |  | 3d | 2011-11-11 | 2011-11-15 | 49 |  |  | 0d | Filipe Barbosa; Rafael Queiroz | 48h |  | 3,850 |  |
| 51 | 1.3.3.3 | Testes |  | 3d | 2011-11-16 | 2011-11-18 | 50 |  |  | 0d | GuilhermeCalixto; Renan Figueiras; Vinicius Vieira | 72h |  | 4,200 |  |
| 52 | 1.3.3.4 | Entrega do build 4 - Acoplamento das builds |  | 1d | 2011-11-21 | 2011-11-21 | 51 |  |  | 0d | GuilhermeCalixto; Henrique Pereira; Jose Guimarães | 24h |  | 1,520 |  |

| ID | WBS | Task | Duration | Start | Finish | Predecessors | Total slack | Resources | Work | Cost |
| --- | --- | --- | --- | --- | --- | --- | --- | --- | --- | --- |
| 53 | 1.4 | **Transição** | 20d | 2011-11-22 | 2011-12-19 |  |  |  | 600h | 39,832 |
| 54 | 1.4.5 | **T1** | 20d | 2011-11-22 | 2011-12-19 |  | 0d |  | 600h | 39,832 |
| 55 | 1.4.5.13 | Desenvolver material de suporte | 5d | 2011-11-22 | 2011-11-28 |  | 0d | Henrique Pereira; Renan Figueiras | 80h | 4,800 |
| 56 | 1.4.5.14 | Gerenciar teste de aceitação | 5d | 2011-11-29 | 2011-12-05 | 55 | 0d | Guilherme Fay; GuilhermeCalixto; Jose Guimarães | 120h | 7,200 |
| 57 | 1.4.5.15 | Correção de erros | 5d | 2011-12-06 | 2011-12-12 | 56 | 0d | Filipe Barbosa; Rafael Queiroz | 80h | 6,410 |
| 58 | 1.4.5.18 | Entrega da release do projeto - Gerar WBS | 5d | 2011-12-13 | 2011-12-19 | 57 | 0d | Filipe Barbosa; Guilherme Fay; GuilhermeCalixto; Henrique Pereira; Jose Guimarães; Rafael Queiroz; Renan Figueiras; Resma de papel; Vinicius Vieira | 320h | 21,422 |
