# DOTPROJECTEAP_Guilherme_Fay

Schedule from MS Project, 2011-08-22 to 2011-12-19, status date 2011-11-07, costs in R$, A marks actual dates.
Microsoft

## Calendars

- Standard: Mon-Fri 08:00-12:00, 13:00-17:00; Sat-Sun off.

## Resources

| Resource | Group | Rate | Cost per use |
| --- | --- | --- | --- |
| -CAPITAL |  |  |  |
| Compra de computador |  | 1500 |  |
| Equipamento de rede |  | 200 |  |
| Servidor |  | 8000 |  |
| Licenças Office |  | 224.91 |  |
| Licença MS Project |  | 1848.15 |  |
| -CUSTEIO |  |  |  |
| Resma de papel |  | 12 |  |
| Eletricidade |  |  |  |
| Internet/Telefonia |  |  |  |
| Manutenção |  |  |  |
| Guilherme Fay | Funcionário | 50 |  |
| Jose Guimarães | Funcionário | 90 |  |
| Rafael Queiroz | Funcionário | 60 |  |
| GuilhermeCalixto | Funcionário | 40 |  |
| Renan Figueiras | Funcionário | 60 |  |
| Filipe Barbosa | Funcionário | 100 | 10 |
| Vinicius Vieira | Funcionário | 75 |  |
| Henrique Pereira | Funcionário | 60 |  |
| Professor Hilmer | Cliente |  |  |

## Schedule

| ID | WBS | Task | Duration | Start | Finish | Predecessors | Complete | Remaining | Actual start | Actual finish | Baseline 1 start | Baseline 1 finish | Constraint | Resources | Work | Actual work | Cost | Actual cost |
| --- | --- | --- | --- | --- | --- | --- | --- | --- | --- | --- | --- | --- | --- | --- | --- | --- | --- | --- |
| 1 | 1 | **DotProjectEAP** | 86d | 2011-08-22 A | 2011-12-19 |  | 90% | 8.48d |  |  | 2011-08-22 | 2011-12-19 |  |  | 1654h | 1654h | 113,200 | 113,200 |
| 2 | 1.1 | **Iniciação 1** | 16d | 2011-08-22 A | 2011-09-12 A |  | 100% |  |  |  | 2011-08-22 | 2011-09-12 |  |  | 364h | 364h | 24,350 | 24,350 |
| 3 | 1 | **Gerenciamento do Projeto** | 10d | 2011-08-22 A | 2011-09-02 A |  | 100% |  |  |  | 2011-08-22 | 2011-08-22 |  |  | 256h | 256h | 17,000 | 17,000 |
| 4 | 1.1.1.1 | Estudo inicial | 1.25d | 2011-08-24 A | 2011-08-25 A |  | 100% |  |  |  | 2011-08-24 | 2011-08-25 |  | Filipe Barbosa; Guilherme Fay; GuilhermeCalixto; Henrique Pereira; Jose Guimarães; Rafael Queiroz; Renan Figueiras; Vinicius Vieira | 74h | 74h | 4,980 | 4,980 |
| 5 | 1.1.1.2 | Primeira Reunião | 0.5d? | 2011-08-22 A | 2011-08-22 A |  | 100% |  |  |  | 2011-08-22 | 2011-08-22 |  | Filipe Barbosa; Guilherme Fay; GuilhermeCalixto; Henrique Pereira; Jose Guimarães; Rafael Queiroz; Renan Figueiras; Vinicius Vieira | 32h | 32h | 2,150 | 2,150 |
| 6 | 1.2 | Definir Escopo | 2d | 2011-08-26 A | 2011-08-29 A | 4, 5 | 100% |  |  |  | 2011-08-26 | 2011-08-29 |  | Filipe Barbosa; Guilherme Fay; GuilhermeCalixto; Henrique Pereira; Jose Guimarães; Rafael Queiroz; Renan Figueiras; Vinicius Vieira | 72h | 72h | 4,690 | 4,690 |
| 7 | 1.1.1.4 | Elaborar Termo de Abertura basico | 1.25d | 2011-09-01 A | 2011-09-02 A | 6 | 100% |  |  |  | 2011-09-01 | 2011-09-02 |  | Filipe Barbosa; Guilherme Fay; GuilhermeCalixto; Henrique Pereira; Jose Guimarães; Rafael Queiroz; Renan Figueiras; Vinicius Vieira | 78h | 78h | 5,180 | 5,180 |
| 8 | 2 | **Modelagem de Negócios** | 16d | 2011-08-22 | 2011-09-12 A |  | 100% |  | 2011-09-06 |  | 2011-08-22 | 2011-08-22 |  |  | 68h | 68h | 4,670 | 4,670 |
| 9 | 2.5 | Definir Papeis e Responsabilidades | 0.5d | 2011-09-12 A | 2011-09-12 A | 7 | 100% |  |  |  | 2011-09-12 | 2011-09-12 |  | Filipe Barbosa; Guilherme Fay; GuilhermeCalixto; Henrique Pereira; Jose Guimarães; Rafael Queiroz; Renan Figueiras; Vinicius Vieira | 32h | 32h | 2,150 | 2,150 |
| 10 | 1.1.2.2 | Elaborar EAP | 1d | 2011-09-06 A | 2011-09-06 A | 7 | 100% |  |  |  | 2011-09-06 | 2011-09-06 |  | Guilherme Fay; Jose Guimarães; Renan Figueiras | 20h | 20h | 1,400 | 1,400 |
| 11 | 1.1.2.3 | Elaborar cronograma Inicial | 1d | 2011-09-08 A | 2011-09-08 A | 10 | 100% |  |  |  | 2011-09-08 | 2011-09-08 |  | Guilherme Fay; Jose Guimarães | 16h | 16h | 1,120 | 1,120 |
| 12 | 3 | **Requisitos** | 7d | 2011-08-22 | 2011-08-30 A |  | 100% |  | 2011-08-30 |  | 2011-08-22 | 2011-08-22 |  |  | 24h | 24h | 1,560 | 1,560 |
| 13 | 3.1 | Analizar o Problema | 0.5d | 2011-08-30 A | 2011-08-30 A | 6 | 100% |  |  |  | 2011-08-30 | 2011-08-30 | start no earlier than 1999-05-04 | Henrique Pereira; Rafael Queiroz; Vinicius Vieira | 12h | 12h | 780 | 780 |
| 14 | 3.2 | Compreender as necessidades dos envolvidos | 0.5d | 2011-08-30 A | 2011-08-30 A | 6 | 100% |  |  |  | 2011-08-30 | 2011-08-30 | start no earlier than 1999-05-04 | Henrique Pereira; Rafael Queiroz; Vinicius Vieira | 12h | 12h | 780 | 780 |
| 15 | 7 | **Configuração & Mudança** | 8d | 2011-08-22 | 2011-08-31 A |  | 100% |  | 2011-08-31 |  | 2011-08-22 | 2011-08-22 |  |  | 16h | 16h | 1,120 | 1,120 |
| 16 | 7.1 | Definir Gerência de configuração | 1d | 2011-08-31 A | 2011-08-31 A | 6 | 100% |  |  |  | 2011-08-31 | 2011-08-31 |  | Guilherme Fay; Jose Guimarães | 16h | 16h | 1,120 | 1,120 |
| 17 | 1.2 | **Iniciação 2** | 16d | 2011-09-12 A | 2011-10-03 |  | 100% |  |  | 2011-09-19 | 2011-09-12 | 2011-10-03 |  |  | 252h | 252h | 17,390 | 17,390 |
| 18 | 1 | **Gerenciamento do Projeto** | 4d | 2011-09-12 A | 2011-09-15 A |  | 100% |  |  |  | 2011-09-12 | 2011-09-12 |  |  | 156h | 156h | 10,690 | 10,690 |
| 19 | 1.1 | Segunda Reunião | 0.5d? | 2011-09-12 A | 2011-09-12 A |  | 100% |  |  |  | 2011-09-12 | 2011-09-12 |  | Filipe Barbosa; Guilherme Fay; GuilhermeCalixto; Henrique Pereira; Jose Guimarães; Rafael Queiroz; Renan Figueiras; Vinicius Vieira | 32h | 32h | 2,150 | 2,150 |
| 20 | 1.2.1.2 | Refinar Termo de Abertura basico | 1d | 2011-09-13 A | 2011-09-13 A | 6 | 100% |  |  |  | 2011-09-13 | 2011-09-13 |  | Filipe Barbosa; Guilherme Fay; GuilhermeCalixto; Henrique Pereira; Jose Guimarães; Rafael Queiroz; Renan Figueiras; Vinicius Vieira | 64h | 64h | 4,290 | 4,290 |
| 21 | 1.2.1.3 | Levantamento de Riscos | 1d | 2011-09-15 A | 2011-09-15 A | 20 | 100% |  |  |  | 2011-09-15 | 2011-09-15 |  | Henrique Pereira; Rafael Queiroz | 16h | 16h | 960 | 960 |
| 22 | 1.2.1.4 | Levantar Orçamento inicial | 1d | 2011-09-15 A | 2011-09-15 A | 20 | 100% |  |  |  | 2011-09-15 | 2011-09-15 |  | Filipe Barbosa; Guilherme Fay; Jose Guimarães | 24h | 24h | 1,930 | 1,930 |
| 23 | 1.2.1.5 | Definir Artefatos | 0.5d | 2011-09-15 A | 2011-09-15 A | 20 | 100% |  |  |  | 2011-09-15 | 2011-09-15 |  | Renan Figueiras | 4h | 4h | 240 | 240 |
| 24 | 1.2.1.6 | Levantar Ferramentas | 1d | 2011-09-15 A | 2011-09-15 A | 20 | 100% |  |  |  | 2011-09-15 | 2011-09-15 |  | Guilherme Fay; Jose Guimarães | 16h | 16h | 1,120 | 1,120 |

| ID | WBS | Task | Type | Duration | Start | Finish | Predecessors | Complete | Actual start | Actual finish | Baseline 1 start | Baseline 1 finish | Constraint | Resources | Work | Actual work | Cost | Actual cost |
| --- | --- | --- | --- | --- | --- | --- | --- | --- | --- | --- | --- | --- | --- | --- | --- | --- | --- | --- |
| 25 | 3 | **Requisitos** |  | 3d | 2011-09-12 | 2011-09-14 A |  | 100% | 2011-09-14 |  | 2011-09-12 | 2011-09-12 |  |  | 64h | 64h | 4,290 | 4,290 |
| 26 | 3.1 | Levantar Funcionalidades do Sistema (Requisitos iniciais) |  | 1d | 2011-09-14 A | 2011-09-14 A | 20 | 100% |  |  | 2011-09-14 | 2011-09-14 | start no earlier than 1999-05-04 | Filipe Barbosa; Guilherme Fay; GuilhermeCalixto; Henrique Pereira; Jose Guimarães; Rafael Queiroz; Renan Figueiras; Vinicius Vieira | 64h | 64h | 4,290 | 4,290 |
| 27 | 1.2.3 | **Analise e Design** |  | 6d | 2011-09-12 | 2011-09-19 A |  | 100% | 2011-09-19 |  | 2011-09-12 | 2011-09-16 |  |  | 16h | 16h | 1,290 | 1,290 |
| 28 | 1.2.3.1 | Definir Arquitetura |  | 1d | 2011-09-19 A | 2011-09-19 A | 26 | 100% |  |  | 2011-09-19 | 2011-09-19 |  | Filipe Barbosa; Rafael Queiroz | 16h | 16h | 1,290 | 1,290 |
| 29 | 7 | **Configuração & Mudança** |  | 2d | 2011-09-12 | 2011-09-13 A |  | 100% | 2011-09-13 |  | 2011-09-12 | 2011-09-12 |  |  | 16h | 16h | 1,120 | 1,120 |
| 30 | 7.1 | Criar Ambiente de Configuração de Versões |  | 1d | 2011-09-13 A | 2011-09-13 A |  | 100% |  |  | 2011-09-13 | 2011-09-13 |  | Guilherme Fay; Jose Guimarães | 16h | 16h | 1,120 | 1,120 |
| 31 | 1.3 | **Elaboração 1** |  | 11d | 2011-10-03 | 2011-10-17 |  | 100% | 2011-09-14 | 2011-10-04 | 2011-10-03 | 2011-10-17 |  |  | 252h | 252h | 16,830 | 16,830 |
| 32 | 1.3.1 | **Gerenciamento do Projeto** |  | 2d | 2011-10-03 A | 2011-10-04 A |  | 100% |  |  | 2011-10-03 | 2011-10-03 |  |  | 96h | 96h | 6,440 | 6,440 |
| 33 | 1.3.1.1 | Terceira Reunião |  | 0.5d | 2011-10-03 A | 2011-10-03 A |  | 100% |  |  | 2011-10-03 | 2011-10-03 |  | Filipe Barbosa; Guilherme Fay; GuilhermeCalixto; Henrique Pereira; Jose Guimarães; Rafael Queiroz; Renan Figueiras; Vinicius Vieira | 32h | 32h | 2,150 | 2,150 |
| 34 | 1.3.1.2 | Reavaliar escopo e risco do projeto |  | 1d | 2011-10-04 A | 2011-10-04 A | 20, 21 | 100% |  |  | 2011-10-04 | 2011-10-04 |  | Filipe Barbosa; Guilherme Fay; GuilhermeCalixto; Henrique Pereira; Jose Guimarães; Rafael Queiroz; Renan Figueiras; Vinicius Vieira | 64h | 64h | 4,290 | 4,290 |
| 35 | 1.3.2 | **Requisitos** |  | 1d? | 2011-10-03 | 2011-10-03 A |  | 100% | 2011-09-14 |  | 2011-10-03 | 2011-10-03 |  |  | 44h | 44h | 2,900 | 2,900 |
| 36 | 3.1 | Levantar Requisitos (Funcionais) |  | 1d | 2011-09-14 A | 2011-09-14 A | 20 | 100% |  |  | 2011-09-14 | 2011-09-14 | start no earlier than 1999-05-04 | Rafael Queiroz; Vinicius Vieira | 16h | 16h | 1,080 | 1,080 |
| 37 | 3.1 | Levantar Requisitos (Nao Funcionais) |  | 1d | 2011-09-14 A | 2011-09-14 A | 20 | 100% |  |  | 2011-09-14 | 2011-09-14 | start no earlier than 1999-05-04 | Henrique Pereira | 8h | 8h | 480 | 480 |
| 38 | 1.3.2.3 | Elaborar diagrama de Casos de uso inicial |  | 0.5d? | 2011-10-03 A | 2011-10-03 A | 36 | 100% |  |  | 2011-10-03 | 2011-10-03 |  | Henrique Pereira; Rafael Queiroz; Vinicius Vieira | 12h | 12h | 780 | 780 |
| 39 | 1.3.2.4 | Elaborar documento visão |  | 0.5d? | 2011-10-03 A | 2011-10-03 A |  | 100% |  |  | 2011-10-03 | 2011-10-03 |  | Guilherme Fay; Jose Guimarães | 8h | 8h | 560 | 560 |
| 40 | 1.3.3 | **Analise e Design** |  | 5d? | 2011-10-03 | 2011-10-07 |  | 100% | 2011-10-04 | 2011-10-04 | 2011-10-03 | 2011-10-07 |  |  | 64h | 64h | 4,290 | 4,290 |
| 41 | 1.3.3.1 | Refinar Arquitetura |  | 1d | 2011-10-04 A | 2011-10-04 A |  | 100% |  |  | 2011-10-04 | 2011-10-04 |  | Filipe Barbosa; Guilherme Fay; GuilhermeCalixto; Henrique Pereira; Jose Guimarães; Rafael Queiroz; Renan Figueiras; Vinicius Vieira | 64h | 64h | 4,290 | 4,290 |
| 42 | 1.3.4 | **Configuração & Mudança** |  | 2d | 2011-10-03 A | 2011-10-04 A |  | 100% |  |  | 2011-10-03 | 2011-10-03 |  |  | 48h | 48h | 3,200 | 3,200 |
| 43 | 1.3.4.1 | Alterar e liberar itens de configuração |  | 0.5d | 2011-10-03 A | 2011-10-03 A |  | 100% |  |  | 2011-10-03 | 2011-10-03 |  | Guilherme Fay; Jose Guimarães | 8h | 8h | 560 | 560 |
| 44 | 1.3.4.2 | Definir Criação de Branch e Merge |  | 1d | 2011-10-04 A | 2011-10-04 A |  | 100% |  |  | 2011-10-04 | 2011-10-04 |  | Guilherme Fay; Jose Guimarães | 16h | 16h | 1,120 | 1,120 |
| 45 | 1.3.4.3 | Criar uma Tag 1.0 com os itens Originais do DotProject - Baseline |  | 1d | 2011-10-03 A | 2011-10-03 A |  | 100% |  |  | 2011-10-03 | 2011-10-03 |  | Guilherme Fay; Jose Guimarães | 12h | 12h | 760 | 760 |
| 46 | 1.3.4.4 | Monitorar Status de configuração |  | 1d | 2011-10-03 A | 2011-10-03 A |  | 100% |  |  | 2011-10-03 | 2011-10-03 |  | Guilherme Fay; Jose Guimarães | 12h | 12h | 760 | 760 |
| 47 | 1.4 | **Elaboração 2** |  | 6d | 2011-10-17 | 2011-10-24 A |  | 100% | 2011-09-05 |  | 2011-10-17 | 2011-10-24 |  |  | 266h | 266h | 17,970 | 17,970 |
| 48 | 1.4.1 | **Gerenciamento do Projeto** |  | 6d | 2011-10-17 A | 2011-10-24 A |  | 100% |  |  | 2011-10-17 | 2011-10-17 |  |  | 36h | 36h | 2,360 | 2,360 |
| 49 | 1.4.1.1 | Quarta reunião |  | 1d | 2011-10-17 A | 2011-10-17 A |  | 100% |  |  | 2011-10-17 | 2011-10-17 |  | Filipe Barbosa; Guilherme Fay; GuilhermeCalixto; Henrique Pereira; Jose Guimarães; Rafael Queiroz; Renan Figueiras; Vinicius Vieira | 36h | 36h | 2,350 | 2,350 |
| 50 | 1.4.1.2 | Entregar termo de Abertura Basico | milestone, manual | 0d | 2011-10-24 A | 2011-10-24 A |  | 100% |  |  | 2011-10-24 | 2011-10-24 |  | Filipe Barbosa; Guilherme Fay; GuilhermeCalixto; Henrique Pereira; Jose Guimarães; Rafael Queiroz; Renan Figueiras; Vinicius Vieira |  |  | 10 | 10 |

| ID | WBS | Task | Type | Duration | Start | Finish | Predecessors | Complete | Actual start | Baseline 1 start | Baseline 1 finish | Constraint | Resources | Work | Actual work | Cost | Actual cost |
| --- | --- | --- | --- | --- | --- | --- | --- | --- | --- | --- | --- | --- | --- | --- | --- | --- | --- |
| 51 | 1.4.2 | **Requisitos** |  | 1d? | 2011-10-17 | 2011-10-17 A |  | 100% | 2011-09-05 | 2011-10-17 | 2011-10-17 |  |  | 172h | 172h | 11,340 | 11,340 |
| 52 | 3.1 | Refinar Requisitos (Funcionais) |  | 1d | 2011-09-05 A | 2011-09-05 A | 7 | 100% |  | 2011-09-05 | 2011-09-05 | start no earlier than 1999-05-04 | Filipe Barbosa; Guilherme Fay; GuilhermeCalixto; Henrique Pereira; Jose Guimarães; Rafael Queiroz; Renan Figueiras; Vinicius Vieira | 36h | 36h | 2,350 | 2,350 |
| 53 | 3.1 | Refinar Requisitos (Nao Funcionais) |  | 1d | 2011-09-05 A | 2011-09-05 A | 7 | 100% |  | 2011-09-05 | 2011-09-05 | start no earlier than 1999-05-04 | Filipe Barbosa; Guilherme Fay; GuilhermeCalixto; Henrique Pereira; Jose Guimarães; Rafael Queiroz; Renan Figueiras; Vinicius Vieira | 36h | 36h | 2,350 | 2,350 |
| 54 | 1.4.2.3 | Refinar diagrama de Casos de uso inicial |  | 1d? | 2011-10-17 A | 2011-10-17 A | 52 | 100% |  | 2011-10-17 | 2011-10-17 |  | Filipe Barbosa; Guilherme Fay; GuilhermeCalixto; Henrique Pereira; Jose Guimarães; Rafael Queiroz; Renan Figueiras; Vinicius Vieira | 36h | 36h | 2,350 | 2,350 |
| 55 | 1.4.2.4 | Entregar documento visão | manual | 1d | 2011-10-16 A | 2011-10-17 A | 52, 53 | 100% |  | 2011-10-19 | 2011-10-19 |  | Filipe Barbosa; Guilherme Fay; GuilhermeCalixto; Henrique Pereira; Jose Guimarães; Rafael Queiroz; Renan Figueiras; Vinicius Vieira | 64h | 64h | 4,290 | 4,290 |
| 56 | 1.4.3 | **Analise e Design** |  | 1d? | 2011-10-17 A | 2011-10-17 A |  | 100% |  | 2011-10-17 | 2011-10-17 |  |  |  |  | 10 | 10 |
| 57 | 1.4.3.1 | Entregar documento de Arquitetura | milestone, manual | 0d | 2011-10-17 A | 2011-10-17 A |  | 100% |  | 2011-10-17 | 2011-10-17 |  | Filipe Barbosa; Guilherme Fay; GuilhermeCalixto; Henrique Pereira; Jose Guimarães; Rafael Queiroz; Renan Figueiras; Vinicius Vieira |  |  | 10 | 10 |
| 58 | 1.4.4 | **Implementação** |  | 2d | 2011-10-21 A | 2011-10-24 A |  | 100% |  | 2011-10-17 | 2011-10-17 |  |  | 18h | 18h | 1,420 | 1,420 |
| 59 | 1.4.4.1 | Implementar componentes (Módulo EAP) |  | 1.25d | 2011-10-21 A | 2011-10-24 A | 55 | 100% |  | 2011-10-21 | 2011-10-24 |  | Filipe Barbosa; Rafael Queiroz | 18h | 18h | 1,410 | 1,410 |
| 60 | 1.4.4.2 | Entrega da Build 1.1 | milestone, manual | 0d | 2011-10-24 A | 2011-10-24 A |  | 100% |  | 2011-10-24 | 2011-10-24 | start no earlier than 2011-10-24 | Filipe Barbosa; Guilherme Fay; GuilhermeCalixto; Henrique Pereira; Jose Guimarães; Rafael Queiroz; Renan Figueiras; Vinicius Vieira |  |  | 10 | 10 |
| 61 | 1.4.5 | **Teste** |  | 2d | 2011-10-17 | 2011-10-18 A |  | 100% | 2011-10-18 | 2011-10-17 | 2011-10-17 |  |  | 16h | 16h | 1,160 | 1,160 |
| 62 | 1.4.5.1 | Criar plano de teste Build 1.1 |  | 1d | 2011-10-18 A | 2011-10-18 A |  | 100% |  | 2011-10-18 | 2011-10-18 |  | Guilherme Fay; Jose Guimarães; Rafael Queiroz | 16h | 16h | 1,160 | 1,160 |
| 63 | 1.4.6 | **Configuração & Mudança** |  | 6d | 2011-10-17 A | 2011-10-24 A |  | 100% |  | 2011-10-17 | 2011-10-17 |  |  | 24h | 24h | 1,680 | 1,680 |
| 64 | 1.4.6.1 | Criar um Branch 1.1.1 Para paralelizar a implementação e testes |  | 0.5d | 2011-10-24 A | 2011-10-24 A | 60 | 100% |  | 2011-10-24 | 2011-10-24 |  | Guilherme Fay; Jose Guimarães | 8h | 8h | 560 | 560 |
| 65 | 1.4.6.2 | Criar uma Tag com os itens de configuração referentes a build 1.1 |  | 0.5d | 2011-10-24 A | 2011-10-24 A | 60 | 100% |  | 2011-10-24 | 2011-10-24 |  | Guilherme Fay; Jose Guimarães | 8h | 8h | 560 | 560 |
| 66 | 1.4.6.3 | Monitorar Status de configuração |  | 0.5d | 2011-10-17 A | 2011-10-17 A |  | 100% |  | 2011-10-17 | 2011-10-17 |  | Guilherme Fay; Jose Guimarães | 8h | 8h | 560 | 560 |
| 67 | 1.5 | **Construção 1** |  | 11d | 2011-10-24 A | 2011-11-07 A |  | 100% |  | 2011-10-24 | 2011-11-07 |  |  | 220h | 220h | 13,830 | 13,830 |
| 68 | 1.5.1 | Gerenciamento do Projeto | manual | 11d | 2011-10-24 A | 2011-11-07 A |  | 100% |  | 2011-10-24 | 2011-10-24 |  | Renan Figueiras | 88h | 88h | 5,280 | 5,280 |
| 69 | 1.5.2 | Requisitos | manual | 1d | 2011-10-24 A | 2011-10-24 A |  | 100% |  | 2011-10-24 | 2011-10-24 |  |  |  |  |  |  |
| 70 | 1.5.3 | Implementação | manual | 10d | 2011-10-24 A | 2011-11-04 A |  | 100% |  | 2011-10-24 | 2011-10-24 |  | Filipe Barbosa; Rafael Queiroz; Renan Figueiras; Vinicius Vieira | 92h | 92h | 5,750 | 5,750 |
| 71 | 1.5.4 | Teste | manual | 2d | 2011-11-04 A | 2011-11-07 A |  | 100% |  | 2011-10-24 | 2011-10-24 |  | Guilherme Fay; Jose Guimarães | 32h | 32h | 2,240 | 2,240 |
| 72 | 1.5.5 | Configuração & Mudança | manual | 0.5d | 2011-10-24 A | 2011-10-24 A |  | 100% |  | 2011-10-24 | 2011-10-24 |  | Guilherme Fay; Jose Guimarães | 8h | 8h | 560 | 560 |
| 73 | 1.6 | **Construção 2** |  | 6d | 2011-11-07 A | 2011-11-14 A |  | 100% |  | 2011-11-07 | 2011-11-21 |  |  | 300h | 300h | 22,830 | 22,830 |
| 74 | 1.6.1 | **Gerenciamento do Projeto** |  | 4d | 2011-11-08 A | 2011-11-13 A |  | 100% |  | 2011-11-07 | 2011-11-07 |  |  | 56h | 56h | 5,300 | 5,300 |
| 75 | 1.6.1.1 | Redmine | manual | 5d | 2011-11-08 A | 2011-11-13 A |  | 100% |  |  |  |  | Filipe Barbosa | 40h | 40h | 4,010 | 4,010 |
| 76 | 1.6.1.2 | Atualização do cronograma | manual | 1d | 2011-11-10 A | 2011-11-10 A |  | 100% |  |  |  |  | Filipe Barbosa; Renan Figueiras | 16h | 16h | 1,290 | 1,290 |
| 77 | 1.6.2 | Requisitos | manual | 1d | 2011-11-07 A | 2011-11-07 A |  | 100% |  | 2011-11-07 | 2011-11-07 |  |  |  |  |  |  |

| ID | WBS | Task | Type | Duration | Start | Finish | Complete | Baseline 1 start | Baseline 1 finish | Resources | Work | Actual work | Cost | Actual cost |
| --- | --- | --- | --- | --- | --- | --- | --- | --- | --- | --- | --- | --- | --- | --- |
| 78 | 1.6.3 | **Implementação** |  | 5d | 2011-11-08 A | 2011-11-14 A | 100% | 2011-11-07 | 2011-11-07 |  | 116h | 116h | 8,410 | 8,410 |
| 79 | 1.6.3.1 | Definir o modo de implementação da API JavaScript | manual | 5d | 2011-11-08 A | 2011-11-14 A | 100% |  |  | Rafael Queiroz; Renan Figueiras | 80h | 80h | 4,800 | 4,800 |
| 80 | 1.6.3.2 | Atualizar banco de dados | manual | 4.5d | 2011-11-08 A | 2011-11-14 A | 100% |  |  | Filipe Barbosa | 36h | 36h | 3,610 | 3,610 |
| 81 | 1.6.4 | **Teste** |  | 1d | 2011-11-12 A | 2011-11-14 A | 100% | 2011-11-07 | 2011-11-07 |  | 96h | 96h | 6,880 | 6,880 |
| 82 | 1.6.4.1 | Suite de teste automatizado - PHP unit | manual | 2d | 2011-11-12 A | 2011-11-14 A | 100% |  |  | Guilherme Fay; Jose Guimarães; Vinicius Vieira | 48h | 48h | 3,440 | 3,440 |
| 83 | 1.6.4.2 | Documentação | manual | 2d | 2011-11-12 A | 2011-11-14 A | 100% |  |  | Guilherme Fay; Jose Guimarães; Vinicius Vieira | 48h | 48h | 3,440 | 3,440 |
| 84 | 1.6.5 | Configuração e Mudança | manual | 2d | 2011-11-12 A | 2011-11-14 A | 100% | 2011-11-07 | 2011-11-07 | Guilherme Fay; Jose Guimarães | 32h | 32h | 2,240 | 2,240 |
| 85 | 1.7 | **Construção 3** |  | 11d | 2011-11-21 | 2011-12-05 |  | 2011-11-21 | 2011-12-05 |  |  |  |  |  |
| 86 | 1.7.1 | Gerenciamento do Projeto | manual | 1d | 2011-11-21 | 2011-11-21 |  | 2011-11-21 | 2011-11-21 |  |  |  |  |  |
| 87 | 1.7.2 | Requisitos | manual | 1d | 2011-11-21 | 2011-11-21 |  | 2011-11-21 | 2011-11-21 |  |  |  |  |  |
| 88 | 1.7.3 | Implementação | manual | 1d? | 2011-11-21 | 2011-11-21 |  | 2011-11-21 | 2011-11-21 |  |  |  |  |  |
| 89 | 1.7.4 | Teste | manual | 1d? | 2011-11-21 | 2011-11-21 |  | 2011-11-21 | 2011-11-21 |  |  |  |  |  |
| 90 | 1.7.5 | Configuração & Mudança | manual | 1d | 2011-11-21 | 2011-11-21 |  | 2011-11-21 | 2011-11-21 |  |  |  |  |  |
| 91 | 1.8 | **Transição** |  | 11d | 2011-12-05 | 2011-12-19 |  | 2011-12-05 | 2011-12-19 |  |  |  |  |  |
| 92 | 1.8.1 | Gerenciamento do Projeto | manual | 1d? | 2011-12-05 | 2011-12-05 |  | 2011-12-05 | 2011-12-05 |  |  |  |  |  |
| 93 | 1.8.2 | Implementação | manual | 1d | 2011-12-05 | 2011-12-05 |  | 2011-12-05 | 2011-12-05 |  |  |  |  |  |
| 94 | 1.8.3 | Teste | manual | 1d | 2011-12-05 | 2011-12-05 |  | 2011-12-05 | 2011-12-05 |  |  |  |  |  |
| 95 | 1.8.4 | Configuração & Mudança | manual | 1d | 2011-12-05 | 2011-12-05 |  | 2011-12-05 | 2011-12-05 |  |  |  |  |  |
